# 10_081_PDT_CON_P153_E146_Final_Avance

Schedule from MS Project, 2019-02-11 to 2019-05-16, A marks actual dates.

## Calendars

- Estándar: Mon-Fri 09:00-13:00, 15:00-19:00; Sat-Sun off.

## Resources

| Resource | Group |
| --- | --- |
| Jorge Alberto de Flón González | SAT |
| Usuario solicitante | SAT |
| Manuel Vargas Espinosa | SAT |
| Jaime Maldonado Báez | CDS |
| Hermilo Martinez Gonzalez | CDS |
| Manuel Francisco Muñoz Calvo | CDS |
| Jose Luis Domínguez López | CDS |
| Administrador ACTT | SAT |
| Administrador ACSMC | SAT |
| AVL | SAT |
| Saúl Juárez Gutierrez | CDS |
| Administrador ACOST | SAT |
| Proveedores AGCTI | SAT |
| PMO AGCTI | SAT |
| Mauricio Jiménez Rosales | CDS |
| Alejandra Ubaldo Santiago | CDS |

## Schedule

| ID | WBS | Task | Type | Duration | Start | Finish | Predecessors | Complete | Remaining | Total slack | Resources | Work | Actual work |
| --- | --- | --- | --- | --- | --- | --- | --- | --- | --- | --- | --- | --- | --- |
| 1 | 1 | **DyP_IPP - Mejoras al Módulo de descargas de acuses del IDE** |  | 68.5d | 2019-02-11 A | 2019-05-16 |  | 34% | 45.33d | 0d |  | 1390h | 444h |
| 2 | 1.1 | **Análisis** |  | 19d | 2019-02-11 A | 2019-03-07 A |  | 100% |  |  |  | 256h | 256h |
| 3 | 1.1.1 | Revisar Información de Insumos |  | 1d | 2019-02-11 A | 2019-02-11 A |  | 100% |  |  | Jaime Maldonado Báez; Jose Luis Domínguez López; Hermilo Martinez Gonzalez | 24h | 24h |
| 4 | 1.1.2 | **Especificación Funcional** |  | 16d | 2019-02-12 A | 2019-03-05 A |  | 100% |  |  |  | 230h | 230h |
| 5 | 1.1.2.1 | **Documentar la especificación funcional** |  | 14d | 2019-02-12 A | 2019-03-01 A |  | 100% |  |  |  | 196h | 196h |
| 6 | 1.1.2.1.1 | Elaborar documentos de especificación funcional |  | 14d | 2019-02-12 A | 2019-03-01 A | 3 | 100% |  |  | Jose Luis Domínguez López [50%]; Hermilo Martinez Gonzalez [50%]; Jaime Maldonado Báez [75%] | 196h | 196h |
| 7 | 1.1.2.2 | Revisar documentación de la especificación funcional (Analista) |  | 3d | 2019-02-27 A | 2019-03-01 A | 6FS-3d | 100% |  |  | Mauricio Jiménez Rosales | 24h | 24h |
| 8 | 1.1.2.3 | Revisar documentación de la especificación funcional (Soluciones de Negocio) |  | 5d | 2019-02-27 A | 2019-03-05 A | 6FS-3d | 100% |  |  | Manuel Vargas Espinosa [25%] | 10h | 10h |
| 9 | 1.1.3 | **Entregables** |  | 0d | 2019-03-07 A | 2019-03-07 A | 8FS+2d | 100% |  |  |  |  |  |
| 10 | 1.1.3.1 | 28_382_CRN | milestone | 0d | 2019-03-07 A | 2019-03-07 A |  | 100% |  |  | Jaime Maldonado Báez |  |  |
| 11 | 1.1.3.2 | 28_382_CCV | milestone | 0d | 2019-03-07 A | 2019-03-07 A |  | 100% |  |  | Jaime Maldonado Báez |  |  |
| 12 | 1.1.3.3 | 28_382_EIU_IDEWEB | milestone | 0d | 2019-03-07 A | 2019-03-07 A |  | 100% |  |  | Jaime Maldonado Báez |  |  |
| 13 | 1.1.3.4 | 28_382_EZS | milestone | 0d | 2019-03-07 A | 2019-03-07 A |  | 100% |  |  | Jaime Maldonado Báez |  |  |
| 14 | 1.1.3.5 | 28_382_ECU_IDEWEB | milestone | 0d | 2019-03-07 A | 2019-03-07 A |  | 100% |  |  | Jaime Maldonado Báez |  |  |
| 15 | 1.1.3.6 | 28_382_MTB | milestone | 0d | 2019-03-07 A | 2019-03-07 A |  | 100% |  |  | Jaime Maldonado Báez |  |  |
| 16 | 1.1.3.7 | 28_382_MCU | milestone | 0d | 2019-03-07 A | 2019-03-07 A |  | 100% |  |  | Jaime Maldonado Báez |  |  |
| 17 | 1.1.3.8 | 28_382_RDP_IDEWEB | milestone | 0d | 2019-03-07 A | 2019-03-07 A |  | 100% |  |  | Jaime Maldonado Báez |  |  |
| 18 | 1.1.4 | Formalizar documentación de la especificación funcional |  | 0.5d | 2019-03-07 A | 2019-03-07 A | 9FF | 100% |  |  | Usuario solicitante [25%]; Manuel Vargas Espinosa [25%] | 2h | 2h |
| 19 | 1.1.5 | Especificación funcional formalizada | milestone | 0d | 2019-03-07 A | 2019-03-07 A | 8, 18 | 100% |  |  | Jaime Maldonado Báez |  |  |
| 20 | 1.2 | **Diseño** |  | 5d | 2019-03-07 A | 2019-03-13 A |  | 100% |  |  |  | 68h | 68h |
| 21 | 1.2.1 | **Diseño de Arquitectura Tecnológica** |  | 5d | 2019-03-07 A | 2019-03-13 A |  | 100% |  |  |  | 68h | 68h |
| 22 | 1.2.1.1 | Revisar documentos de la arquitectura de la solución |  | 1d | 2019-03-07 A | 2019-03-07 A | 9FS-1d | 100% |  |  | Jaime Maldonado Báez | 8h | 8h |
| 23 | 1.2.1.2 | **Diseño Aplicativo Detallado (MDAP)** |  | 4d | 2019-03-08 A | 2019-03-13 A |  | 100% |  |  |  | 56h | 56h |
| 24 | 1.2.1.2.1 | **Elaborar Documentos de Diseño** |  | 4d | 2019-03-08 A | 2019-03-13 A |  | 100% |  |  |  | 40h | 40h |
| 25 | 1.2.1.2.1.1 | Actualizar documentos de diseño |  | 4d | 2019-03-08 A | 2019-03-13 A | 22 | 100% |  |  | Jose Luis Domínguez López [25%]; Jaime Maldonado Báez [50%]; Hermilo Martinez Gonzalez [50%] | 40h | 40h |
| 26 | 1.2.1.2.2 | Revisar documentos de diseño (Analista) |  | 1d | 2019-03-13 A | 2019-03-13 A | 24FS-1d | 100% |  |  | Mauricio Jiménez Rosales | 8h | 8h |
| 27 | 1.2.1.2.3 | Revisar documentación de la arquitectura tecnológica (ACTT) |  | 1d | 2019-03-13 A | 2019-03-13 A | 24FS-1d | 100% |  |  | Administrador ACTT [50%]; Administrador ACSMC [50%] | 8h | 8h |

| ID | WBS | Task | Type | Duration | Start | Finish | Predecessors | Complete | Remaining | Total slack | Resources | Work | Actual work |
| --- | --- | --- | --- | --- | --- | --- | --- | --- | --- | --- | --- | --- | --- |
| 28 | 1.2.1.3 | **Entregables** |  | 0d | 2019-03-13 A | 2019-03-13 A | 27 | 100% |  |  |  |  |  |
| 29 | 1.2.1.3.1 | 28_382_RPP | milestone | 0d | 2019-03-13 A | 2019-03-13 A |  | 100% |  |  | Jaime Maldonado Báez |  |  |
| 30 | 1.2.1.3.2 | 28_382_VBD | milestone | 0d | 2019-03-13 A | 2019-03-13 A |  | 100% |  |  | Jaime Maldonado Báez |  |  |
| 31 | 1.2.1.3.3 | 28_382_DIC_IDEWEB | milestone | 0d | 2019-03-13 A | 2019-03-13 A |  | 100% |  |  | Jaime Maldonado Báez |  |  |
| 32 | 1.2.1.3.4 | 28_382_MLF | milestone | 0d | 2019-03-13 A | 2019-03-13 A |  | 100% |  |  | Jaime Maldonado Báez |  |  |
| 33 | 1.2.1.4 | Formalizar documentación de la arquitectura tecnológica |  | 1d | 2019-03-13 A | 2019-03-13 A | 28FF | 100% |  |  | Administrador ACTT [50%] | 4h | 4h |
| 34 | 1.2.1.5 | Arquitectura tecnológica formalizada | milestone | 0d | 2019-03-13 A | 2019-03-13 A | 28FF | 100% |  |  | Jaime Maldonado Báez |  |  |
| 35 | 1.3 | **Desarrollo** |  | 15d | 2019-03-14 A | 2019-04-03 |  | 31% | 10.41d | 30.5d |  | 484h | 120h |
| 36 | 1.3.1 | **Desarrollar / parametrizar aplicación** |  | 10d | 2019-03-14 A | 2019-03-27 |  | 50% | 5d | 0d |  | 240h | 120h |
| 37 | 1.3.1.1 | **Desarrollar artefactos de desarrollo** |  | 10d | 2019-03-14 A | 2019-03-27 |  | 50% | 5d | 0d |  | 240h | 120h |
| 38 | 1.3.1.1.1 | Integrar Servicios - (Selladora, Envió Correo, Autentificación, Acceso y Encriptar Archivo) |  | 10d | 2019-03-14 A | 2019-03-27 | 20 | 50% | 5d | 0d | Jaime Maldonado Báez | 80h | 40h |
| 39 | 1.3.1.1.2 | Integrar Servicios - (Presentación Internet/Modulo, Recepción, Validación y Carga DWH) |  | 10d | 2019-03-14 A | 2019-03-27 | 20 | 50% | 5d | 0d | Manuel Francisco Muñoz Calvo | 80h | 40h |
| 40 | 1.3.1.1.3 | Integrar Servicios - (Monitor, Monitor Servicios y Monitor DEC_IDE_Tradicional) |  | 10d | 2019-03-14 A | 2019-03-27 | 20 | 50% | 5d | 0d | Jose Luis Domínguez López | 80h | 40h |
| 41 | 1.3.2 | Integrar código y versionamiento |  | 5d | 2019-03-21 | 2019-03-27 | 37FS-5d |  |  | 0d | Mauricio Jiménez Rosales | 40h |  |
| 42 | 1.3.3 | Elaborar estrategia, plan y casos prueba |  | 5d | 2019-03-21 | 2019-03-27 | 37FS-5d |  |  | 35.5d | Hermilo Martinez Gonzalez | 40h |  |
| 43 | 1.3.4 | Realizar pruebas unitarias |  | 1d | 2019-03-28 | 2019-03-28 | 41 |  |  | 0d | Jaime Maldonado Báez; Manuel Francisco Muñoz Calvo; Jose Luis Domínguez López | 24h |  |
| 44 | 1.3.5 | Realizar pruebas calidad de código |  | 1d | 2019-03-29 | 2019-03-29 | 43 |  |  | 0d | Jaime Maldonado Báez; Manuel Francisco Muñoz Calvo; Jose Luis Domínguez López | 24h |  |
| 45 | 1.3.6 | Realizar pruebas funcionales de la aplicación |  | 3d | 2019-04-01 | 2019-04-03 | 44 |  |  | 30.5d | Jaime Maldonado Báez; Manuel Francisco Muñoz Calvo [50%]; Jose Luis Domínguez López | 60h |  |
| 46 | 1.3.7 | Realizar pruebas de vulnerabilidad (ambiente desarrollo 50%) |  | 3d | 2019-04-01 | 2019-04-03 | 44 |  |  | 0d | Hermilo Martinez Gonzalez; Saúl Juárez Gutierrez | 48h |  |
| 47 | 1.3.8 | Generar y entregar paquete aplicativo a la AVL |  | 1d | 2019-04-03 | 2019-04-03 | 46FS-1d |  |  | 0d | Alejandra Ubaldo Santiago | 8h |  |
| 48 | 1.3.9 | **Entregables** |  | 0d | 2019-04-03 | 2019-04-03 |  |  |  | 30.5d |  |  |  |
| 49 | 1.3.9.1 | Reporte de pruebas unitarias | milestone | 0d | 2019-04-03 | 2019-04-03 | 47 |  |  | 30.5d | Jaime Maldonado Báez |  |  |
| 50 | 1.3.9.2 | Reporte de pruebas de calidad de código | milestone | 0d | 2019-04-03 | 2019-04-03 | 47 |  |  | 30.5d | Jaime Maldonado Báez |  |  |
| 51 | 1.3.9.3 | Reporte de pruebas de vulnerabilidad (50% desarrollo) | milestone | 0d | 2019-04-03 | 2019-04-03 | 47 |  |  | 30.5d | Jaime Maldonado Báez |  |  |

| ID | WBS | Task | Type | Duration | Start | Finish | Predecessors | Total slack | Free slack | Resources | Work |
| --- | --- | --- | --- | --- | --- | --- | --- | --- | --- | --- | --- |
| 52 | 1.3.9.4 | **Paquete (s)** |  | 0d | 2019-04-03 | 2019-04-03 |  | 30.5d |  |  |  |
| 53 | 1.3.9.4.1 | 28_382_MAC_IDEWEB | milestone | 0d | 2019-04-03 | 2019-04-03 | 47 | 30.5d |  | Jaime Maldonado Báez |  |
| 54 | 1.3.9.4.2 | 28_382_MAI_IDEWEB | milestone | 0d | 2019-04-03 | 2019-04-03 | 47 | 30.5d |  | Jaime Maldonado Báez |  |
| 55 | 1.3.9.4.3 | DLCC19101DE1.dp | milestone | 0d | 2019-04-03 | 2019-04-03 | 47 | 30.5d |  | Jaime Maldonado Báez |  |
| 56 | 1.3.9.4.4 | DLCC19101DE1 | milestone | 0d | 2019-04-03 | 2019-04-03 | 47 | 30.5d |  | Jaime Maldonado Báez |  |
| 57 | 1.3.9.4.5 | DLCC19101DE1 | milestone | 0d | 2019-04-03 | 2019-04-03 | 47 | 30.5d |  | Jaime Maldonado Báez |  |
| 58 | 1.4 | **Pruebas** |  | 15d | 2019-04-04 | 2019-04-24 |  | 0d |  |  | 431h |
| 59 | 1.4.1 | Ambientación integración y UAT | milestone | 0d | 2019-04-04 | 2019-04-04 | 47FS+1d | 29.5d |  |  |  |
| 60 | 1.4.2 | Seguridad identidades integración y UAT | milestone | 0d | 2019-04-04 | 2019-04-04 | 47FS+1d | 29.5d |  |  |  |
| 61 | 1.4.3 | **Pruebas de integración aplicativa** |  | 5d | 2019-04-04 | 2019-04-10 |  | 0d |  |  | 88h |
| 62 | 1.4.3.1 | Compilar, armar e instalar solución aplicativa |  | 1d | 2019-04-04 | 2019-04-04 | 47 | 29.5d | 0d | AVL | 8h |
| 63 | 1.4.3.2 | Acompañamiento a compilar, armar e instalar solución aplicativa |  | 1d | 2019-04-04 | 2019-04-04 | 47 | 0d |  | Manuel Francisco Muñoz Calvo [50%]; Jaime Maldonado Báez [50%] | 8h |
| 64 | 1.4.3.3 | Aplicación instalada en ambiente de integración | milestone | 0d | 2019-04-04 | 2019-04-04 | 62, 63 | 29.5d |  | Jaime Maldonado Báez |  |
| 65 | 1.4.3.4 | Ejecutar pruebas de integración aplicativa |  | 2.5d | 2019-04-05 | 2019-04-09 | 63 | 0d |  | Manuel Francisco Muñoz Calvo [50%]; Jose Luis Domínguez López [50%] | 20h |
| 66 | 1.4.3.5 | Realizar pruebas de vulnerabilidad (ambiente integración 75%) |  | 2.5d | 2019-04-05 | 2019-04-09 | 63 | 26.5d | 0d | Hermilo Martinez Gonzalez [50%]; Jaime Maldonado Báez [50%] | 20h |
| 67 | 1.4.3.6 | Atención a la iniciativa para la solución aplicativa |  | 2.5d | 2019-04-05 | 2019-04-09 | 66FS-2d | 26.5d |  | AVL | 20h |
| 68 | 1.4.3.7 | Reporte de prueba de integración aplicativa | milestone | 0d | 2019-04-10 | 2019-04-10 | 65FS+1d | 26d |  | Jaime Maldonado Báez |  |
| 69 | 1.4.3.8 | Actualizar paquete aplicativo a la AVL |  | 0.5d | 2019-04-10 | 2019-04-10 | 65FS+1d | 0d |  | Alejandra Ubaldo Santiago; Saúl Juárez Gutierrez; Hermilo Martinez Gonzalez | 12h |
| 70 | 1.4.4 | **Pruebas de usuario** |  | 5d | 2019-04-11 | 2019-04-17 |  | 0d |  |  | 117h |
| 71 | 1.4.4.1 | Compilar, Armar e Instalar solución aplicativa - ambiente de pruebas de usuario |  | 1d | 2019-04-11 | 2019-04-11 | 69 | 0d |  | Administrador ACOST [25%]; AVL [25%] | 4h |
| 72 | 1.4.4.2 | Acompañar instalación solución aplicativa - ambiente de pruebas de usuario |  | 1d | 2019-04-11 | 2019-04-11 | 69 | 24.5d |  | Manuel Francisco Muñoz Calvo [50%]; Jaime Maldonado Báez [50%] | 8h |
| 73 | 1.4.4.3 | Aplicación instalada en ambiente de pruebas de usuario | milestone | 0d | 2019-04-11 | 2019-04-11 | 71 | 0d |  | Jaime Maldonado Báez |  |
| 74 | 1.4.4.4 | Validar solución aplicativa instalada en ambiente de UAT |  | 0.5d | 2019-04-12 | 2019-04-12 | 73 | 0d |  | Manuel Vargas Espinosa | 4h |
| 75 | 1.4.4.5 | Coordinar las pruebas de aceptación del usuario |  | 0.5d | 2019-04-12 | 2019-04-12 | 74 | 0d |  | Manuel Vargas Espinosa [25%] | 1h |
| 76 | 1.4.4.6 | Ejecutar pruebas de usuario de la solución completa |  | 3d | 2019-04-15 | 2019-04-17 | 75 | 0d |  | Usuario solicitante [25%] | 6h |
| 77 | 1.4.4.7 | Acompañar pruebas de usuario y atender hallazgos/defectos en la aplicación |  | 3d | 2019-04-15 | 2019-04-17 | 75 | 20.5d |  | Manuel Francisco Muñoz Calvo; Jose Luis Domínguez López; Jaime Maldonado Báez | 72h |
| 78 | 1.4.4.8 | Registrar hallazgos / defectos |  | 3d | 2019-04-15 | 2019-04-17 | 76FS-3d | 20.5d | 0d | Usuario solicitante [50%] | 12h |
| 79 | 1.4.4.9 | Atender incidentes en ambientes |  | 3d | 2019-04-15 | 2019-04-17 | 76FS-3d | 0d |  | Proveedores AGCTI [25%] | 6h |
| 80 | 1.4.4.10 | Validar defectos ajustados |  | 0.5d | 2019-04-17 | 2019-04-17 | 79FS-1d | 0d |  | Usuario solicitante [25%]; Manuel Vargas Espinosa [25%] | 2h |
| 81 | 1.4.4.11 | Elaborar Oficio de Aceptación de Pruebas de Usuario y Liberación |  | 0.5d | 2019-04-17 | 2019-04-17 | 80 | 0d |  | Usuario solicitante [25%]; Manuel Vargas Espinosa [25%] | 2h |
| 82 | 1.4.4.12 | Oficio de Aceptación de Pruebas de Usuario y Liberación | milestone | 0d | 2019-04-17 | 2019-04-17 | 81 | 0d |  | Usuario solicitante; Manuel Vargas Espinosa |  |
| 83 | 1.4.5 | Ambientación de estrés y producción | milestone | 0d | 2019-04-17 | 2019-04-17 | 78 | 20.5d |  |  |  |
| 84 | 1.4.6 | Seguridad identidades estrés y producción | milestone | 0d | 2019-04-17 | 2019-04-17 | 78 | 20.5d |  |  |  |

| ID | WBS | Task | Type | Duration | Start | Finish | Predecessors | Total slack | Free slack | Resources | Work |
| --- | --- | --- | --- | --- | --- | --- | --- | --- | --- | --- | --- |
| 85 | 1.4.7 | **Pruebas de vulnerabilidad** |  | 5d | 2019-04-18 | 2019-04-24 |  | 0d |  |  | 128h |
| 86 | 1.4.7.1 | Ejecutar pruebas de vulnerabilidad |  | 3d | 2019-04-18 | 2019-04-22 | 82 | 0d |  | Jaime Maldonado Báez; Saúl Juárez Gutierrez; Manuel Francisco Muñoz Calvo | 72h |
| 87 | 1.4.7.2 | Informar los hallazgos |  | 1d | 2019-04-23 | 2019-04-23 | 86 | 0d |  | Jaime Maldonado Báez; Saúl Juárez Gutierrez; Manuel Francisco Muñoz Calvo | 24h |
| 88 | 1.4.7.3 | Atender hallazgos |  | 1d | 2019-04-24 | 2019-04-24 | 87 | 0d |  | Jaime Maldonado Báez; Saúl Juárez Gutierrez; Manuel Francisco Muñoz Calvo | 24h |
| 89 | 1.4.7.4 | Certificar la seguridad de información |  | 2d | 2019-04-23 | 2019-04-24 | 86 | 0d |  | Administrador ACSMC [50%] | 8h |
| 90 | 1.4.7.5 | Reporte de pruebas de vulnerabilidad | milestone | 0d | 2019-04-24 | 2019-04-24 | 89 | 0d |  | Proveedores AGCTI |  |
| 91 | 1.4.7.6 | Certificado de no vulnerabilidades | milestone | 0d | 2019-04-24 | 2019-04-24 | 90 | 0d |  | Administrador ACSMC |  |
| 92 | 1.4.8 | **Pruebas de estrés** |  | 5d | 2019-04-18 | 2019-04-24 |  | 15.5d |  |  | 98h |
| 93 | 1.4.8.1 | Compilar, Armar e Instalar solución aplicativa - ambiente de estrés |  | 0.5d | 2019-04-18 | 2019-04-18 | 82 | 20d |  | Administrador ACOST [25%]; Proveedores AGCTI [25%] | 2h |
| 94 | 1.4.8.2 | Automatizar caso de prueba de estrés |  | 3d | 2019-04-18 | 2019-04-22 | 82 | 15.5d | 0d | Jose Luis Domínguez López; Hermilo Martinez Gonzalez | 48h |
| 95 | 1.4.8.3 | Ejecutar pruebas de estrés |  | 1d | 2019-04-23 | 2019-04-23 | 94 | 15.5d | 0d | Jose Luis Domínguez López; Hermilo Martinez Gonzalez | 16h |
| 96 | 1.4.8.4 | Informar los hallazgos |  | 1d | 2019-04-24 | 2019-04-24 | 95 | 15.5d | 0d | Jose Luis Domínguez López; Hermilo Martinez Gonzalez | 16h |
| 97 | 1.4.8.5 | Atender hallazgos |  | 1d | 2019-04-24 | 2019-04-24 | 96FS-1d | 15.5d |  | Administrador ACSMC [50%]; Administrador ACTT | 12h |
| 98 | 1.4.8.6 | Formalizar informe de pruebas de estrés |  | 1d | 2019-04-24 | 2019-04-24 | 96FS-1d | 15.5d | 0d | AVL [50%] | 4h |
| 99 | 1.4.8.7 | Reporte de pruebas de estrés | milestone | 0d | 2019-04-24 | 2019-04-24 | 98 | 15.5d | 0d | AVL |  |
| 100 | 1.4.8.8 | Informe de pruebas de estrés | milestone | 0d | 2019-04-24 | 2019-04-24 | 99 | 15.5d |  | AVL |  |
| 101 | 1.5 | **Acompañamiento a la implementación** |  | 9.5d | 2019-04-25 | 2019-05-08 |  | 0d |  |  | 139h |
| 102 | 1.5.1 | Realizar toma aplicativa |  | 0.5d | 2019-04-25 | 2019-04-25 | 85 | 0d |  | Jorge Alberto de Flón González [25%]; Administrador ACOST [25%] | 2h |
| 103 | 1.5.2 | Capacitar a Mesa de servicio (CDS) | milestone | 0d | 2019-04-25 | 2019-04-25 | 85FS+1d | 14.5d |  | Jaime Maldonado Báez |  |
| 104 | 1.5.3 | Capacitar a Mesa de servicio (RAPE) | milestone | 0d | 2019-04-25 | 2019-04-25 | 85FS+1d | 14.5d |  | Jorge Alberto de Flón González [50%] |  |
| 105 | 1.5.4 | Instalar solución aplicativa - ambiente de producción |  | 1d | 2019-04-25 | 2019-04-26 | 102 | 0d |  | Administrador ACOST [50%]; Proveedores AGCTI [50%] | 8h |
| 106 | 1.5.5 | Acompañar en la implementación solución aplicativa - ambiente de producción |  | 1d | 2019-04-25 | 2019-04-26 | 102 | 14d |  | Jaime Maldonado Báez | 8h |
| 107 | 1.5.6 | Informar de la puesta en producción |  | 0.5d | 2019-04-26 | 2019-04-26 | 105 | 0d |  | Manuel Vargas Espinosa [25%] | 1h |
| 108 | 1.5.7 | Dar seguimiento al periodo de estabilización |  | 7.5d | 2019-04-29 | 2019-05-08 | 107 | 0d |  | Jaime Maldonado Báez; Saúl Juárez Gutierrez | 120h |
| 109 | 1.5.8 | Aplicación instalada en ambiente de producción | milestone | 0d | 2019-04-26 | 2019-04-26 | 105 | 14d |  | Administrador ACOST; Proveedores AGCTI |  |

| ID | WBS | Task | Type | Duration | Start | Finish | Predecessors | Total slack | Resources | Work |
| --- | --- | --- | --- | --- | --- | --- | --- | --- | --- | --- |
| 110 | 1.6 | **Cierre** |  | 6d | 2019-05-08 | 2019-05-16 |  | 0d |  | 12h |
| 111 | 1.6.1 | Cerrar proyecto |  | 6d | 2019-05-08 | 2019-05-16 | 108 | 0d | PMO AGCTI [25%] | 12h |
| 112 | 1.6.2 | Proyecto cerrado | milestone | 0d | 2019-05-16 | 2019-05-16 | 111 | 0d | PMO AGCTI |  |
