# 10_081_PDT_CON_P153_E146_Final_Avance

Schedule from MS Project, 2019-02-11 to 2019-07-30, A marks actual dates.

## Calendars

- Estándar: Mon-Fri 09:00-13:00, 15:00-19:00; Sat-Sun off. Exceptions (off unless hours are given): 2019-04-18 (Jueves Santo), 2019-04-19 (Viernes Santo), 2019-05-01 (Dia del trabajo).

## Resources

| Resource | Group |
| --- | --- |
| Ignacio Ruiz Casillas | SAT |
| Usuario solicitante | SAT |
| Manuel Vargas Espinosa | SAT |
| Jaime Maldonado Báez | CDS |
| Hermilo Martínez González | CDS |
| Manuel Francisco Muñoz Calvo | CDS |
| Ángel Ramírez Mancera | CDS |
| Administrador ACTT | SAT |
| Administrador ACSMC | SAT |
| AVL | SAT |
| Saúl Juárez Gutierrez | CDS |
| Administrador ACOST | SAT |
| Proveedores AGCTI | SAT |
| PMO AGCTI | SAT |
| Mauricio Jiménez Rosales | CDS |
| Alejandra Ubaldo Santiago | CDS |
| Arturo Mínguez Alcántara |  |
| Isaac Díaz Vargas |  |
| José Manuel Aranda Diaz |  |
| Adiel Jacob García García |  |
| José Luis Domínguez López |  |
| Efraín Tapia Puebla |  |
| José Luis Valtierra Pizano |  |
| Wendy Fabiola Ruiz Nieto |  |
| Daniel Abraham Sánchez Cárdenas |  |
| Cristian Adolfo Rojo Delgado |  |

## Schedule

| ID | WBS | Task | Type | Duration | Start | Finish | Predecessors | Complete | Remaining | Total slack | Resources | Work | Actual work |
| --- | --- | --- | --- | --- | --- | --- | --- | --- | --- | --- | --- | --- | --- |
| 1 | 1 | **DyP_IPP - Mejoras al Módulo de descargas de acuses del IDE** |  | 119d | 2019-02-11 A | 2019-07-30 |  | 70% | 35.34d | 0d |  | 2608h | 2033.8h |
| 2 | 1.1 | **Análisis** |  | 19d | 2019-02-11 A | 2019-03-07 A |  | 100% |  |  |  | 480h | 480h |
| 3 | 1.1.1 | Revisar Información de Insumos |  | 1d | 2019-02-11 A | 2019-02-11 A |  | 100% |  |  | Jaime Maldonado Báez; Ángel Ramírez Mancera; Hermilo Martínez González; Arturo Mínguez Alcántara | 32h | 32h |
| 4 | 1.1.2 | **Especificación Funcional** |  | 16d | 2019-02-12 A | 2019-03-05 A |  | 100% |  |  |  | 446h | 446h |
| 5 | 1.1.2.1 | **Documentar la especificación funcional** |  | 14d | 2019-02-12 A | 2019-03-01 A |  | 100% |  |  |  | 388h | 388h |
| 6 | 1.1.2.1.1 | Elaborar documentos de especificación funcional |  | 14d | 2019-02-12 A | 2019-03-01 A | 3 | 100% |  |  | Hermilo Martínez González [86.6%]; Jaime Maldonado Báez [86.6%]; Manuel Francisco Muñoz Calvo [86.6%]; Ángel Ramírez Mancera [86.6%] | 388h | 388h |
| 7 | 1.1.2.2 | Revisar documentación de la especificación funcional (Analista) |  | 3d | 2019-02-27 A | 2019-03-01 A | 6FS-3d | 100% |  |  | Mauricio Jiménez Rosales; Arturo Mínguez Alcántara | 48h | 48h |
| 8 | 1.1.2.3 | Revisar documentación de la especificación funcional (Soluciones de Negocio) |  | 5d | 2019-02-27 A | 2019-03-05 A | 6FS-3d | 100% |  |  | Manuel Vargas Espinosa [25%] | 10h | 10h |
| 9 | 1.1.3 | **Entregables** |  | 0d | 2019-03-07 A | 2019-03-07 A | 8FS+2d | 100% |  |  |  |  |  |
| 10 | 1.1.3.1 | 28_382_CRN | milestone | 0d | 2019-03-07 A | 2019-03-07 A |  | 100% |  |  | Jaime Maldonado Báez |  |  |
| 11 | 1.1.3.2 | 28_382_CCV | milestone | 0d | 2019-03-07 A | 2019-03-07 A |  | 100% |  |  | Jaime Maldonado Báez |  |  |
| 12 | 1.1.3.3 | 28_382_EIU_IDEWEB | milestone | 0d | 2019-03-07 A | 2019-03-07 A |  | 100% |  |  | Jaime Maldonado Báez |  |  |
| 13 | 1.1.3.4 | 28_382_EZS | milestone | 0d | 2019-03-07 A | 2019-03-07 A |  | 100% |  |  | Jaime Maldonado Báez |  |  |
| 14 | 1.1.3.5 | 28_382_ECU_IDEWEB | milestone | 0d | 2019-03-07 A | 2019-03-07 A |  | 100% |  |  | Jaime Maldonado Báez |  |  |
| 15 | 1.1.3.6 | 28_382_MTB | milestone | 0d | 2019-03-07 A | 2019-03-07 A |  | 100% |  |  | Jaime Maldonado Báez |  |  |
| 16 | 1.1.3.7 | 28_382_MCU | milestone | 0d | 2019-03-07 A | 2019-03-07 A |  | 100% |  |  | Jaime Maldonado Báez |  |  |
| 17 | 1.1.3.8 | 28_382_RDP_IDEWEB | milestone | 0d | 2019-03-07 A | 2019-03-07 A |  | 100% |  |  | Jaime Maldonado Báez |  |  |
| 18 | 1.1.4 | Formalizar documentación de la especificación funcional |  | 0.5d | 2019-03-07 A | 2019-03-07 A | 9FF | 100% |  |  | Usuario solicitante [25%]; Manuel Vargas Espinosa [25%] | 2h | 2h |
| 19 | 1.1.5 | Especificación funcional formalizada | milestone | 0d | 2019-03-07 A | 2019-03-07 A | 8, 18 | 100% |  |  | Jaime Maldonado Báez |  |  |
| 20 | 1.2 | **Diseño** |  | 5d | 2019-03-07 A | 2019-03-13 A |  | 100% |  |  |  | 116h | 116h |
| 21 | 1.2.1 | **Diseño de Arquitectura Tecnológica** |  | 5d | 2019-03-07 A | 2019-03-13 A |  | 100% |  |  |  | 116h | 116h |
| 22 | 1.2.1.1 | Revisar documentos de la arquitectura de la solución |  | 1d | 2019-03-07 A | 2019-03-07 A | 9FS-1d | 100% |  |  | Jaime Maldonado Báez; Arturo Mínguez Alcántara | 16h | 16h |
| 23 | 1.2.1.2 | **Diseño Aplicativo Detallado (MDAP)** |  | 4d | 2019-03-08 A | 2019-03-13 A |  | 100% |  |  |  | 96h | 96h |
| 24 | 1.2.1.2.1 | **Elaborar Documentos de Diseño** |  | 4d | 2019-03-08 A | 2019-03-13 A |  | 100% |  |  |  | 72h | 72h |
| 25 | 1.2.1.2.1.1 | Actualizar documentos de diseño |  | 4d | 2019-03-08 A | 2019-03-13 A | 22 | 100% |  |  | Hermilo Martínez González [75%]; Ángel Ramírez Mancera [75%]; Jaime Maldonado Báez [75%] | 72h | 72h |
| 26 | 1.2.1.2.2 | Revisar documentos de diseño (Analista) |  | 1d | 2019-03-13 A | 2019-03-13 A | 24FS-1d | 100% |  |  | Mauricio Jiménez Rosales; Arturo Mínguez Alcántara | 16h | 16h |
| 27 | 1.2.1.2.3 | Revisar documentación de la arquitectura tecnológica (ACTT) |  | 1d | 2019-03-13 A | 2019-03-13 A | 24FS-1d | 100% |  |  | Administrador ACTT [50%]; Administrador ACSMC [50%] | 8h | 8h |

| ID | WBS | Task | Type | Duration | Start | Finish | Predecessors | Complete | Resources | Work | Actual work |
| --- | --- | --- | --- | --- | --- | --- | --- | --- | --- | --- | --- |
| 28 | 1.2.1.3 | **Entregables** |  | 0d | 2019-03-13 A | 2019-03-13 A | 27 | 100% |  |  |  |
| 29 | 1.2.1.3.1 | 28_382_RPP | milestone | 0d | 2019-03-13 A | 2019-03-13 A |  | 100% | Jaime Maldonado Báez |  |  |
| 30 | 1.2.1.3.2 | 28_382_VBD | milestone | 0d | 2019-03-13 A | 2019-03-13 A |  | 100% | Jaime Maldonado Báez |  |  |
| 31 | 1.2.1.3.3 | 28_382_DIC_IDEWEB | milestone | 0d | 2019-03-13 A | 2019-03-13 A |  | 100% | Jaime Maldonado Báez |  |  |
| 32 | 1.2.1.3.4 | 28_382_MLF | milestone | 0d | 2019-03-13 A | 2019-03-13 A |  | 100% | Jaime Maldonado Báez |  |  |
| 33 | 1.2.1.4 | Formalizar documentación de la arquitectura tecnológica |  | 1d | 2019-03-13 A | 2019-03-13 A | 28FF | 100% | Administrador ACTT [50%] | 4h | 4h |
| 34 | 1.2.1.5 | Arquitectura tecnológica formalizada | milestone | 0d | 2019-03-13 A | 2019-03-13 A | 28FF | 100% | Jaime Maldonado Báez |  |  |
| 35 | 1.3 | **Desarrollo** |  | 49d | 2019-03-14 A | 2019-05-24 A |  | 100% |  | 962h | 962h |
| 36 | 1.3.1 | **Desarrollar / parametrizar aplicación** |  | 12d | 2019-03-14 A | 2019-03-29 A |  | 100% |  | 546h | 546h |
| 37 | 1.3.1.1 | **Desarrollar artefactos de desarrollo** |  | 12d | 2019-03-14 A | 2019-03-29 A |  | 100% |  | 546h | 546h |
| 38 | 1.3.1.1.1 | Integrar Servicios - (Selladora, Envió Correo, Autentificación, Acceso y Encriptar Archivo) |  | 12d | 2019-03-14 A | 2019-03-29 A | 20 | 100% | Jaime Maldonado Báez [94.8%]; Arturo Mínguez Alcántara [94.8%] | 182h | 182h |
| 39 | 1.3.1.1.2 | Integrar Servicios - (Presentación Internet/Modulo, Recepción, Validación y Carga DWH) |  | 12d | 2019-03-14 A | 2019-03-29 A | 20 | 100% | Manuel Francisco Muñoz Calvo [94.8%]; Isaac Díaz Vargas [94.8%] | 182h | 182h |
| 40 | 1.3.1.1.3 | Integrar Servicios - (Monitor, Monitor Servicios y Monitor DEC_IDE_Tradicional) |  | 12d | 2019-03-14 A | 2019-03-29 A | 20 | 100% | Ángel Ramírez Mancera [94.8%]; José Manuel Aranda Diaz [94.8%] | 182h | 182h |
| 41 | 1.3.2 | Integrar código y versionamiento |  | 7d | 2019-03-25 A | 2019-04-02 A | 37FS-5d | 100% | Mauricio Jiménez Rosales [89.3%]; Adiel Jacob García García [89.3%] | 100h | 100h |
| 42 | 1.3.3 | Elaborar estrategia, plan y casos prueba |  | 7d | 2019-03-25 A | 2019-04-02 A | 37FS-5d | 100% | Hermilo Martínez González [89.3%]; José Luis Domínguez López [89.3%] | 100h | 100h |
| 43 | 1.3.4 | Realizar pruebas unitarias |  | 6d | 2019-04-03 A | 2019-04-10 A | 41 | 100% | Jaime Maldonado Báez [69.4%]; Manuel Francisco Muñoz Calvo [69.4%]; Ángel Ramírez Mancera [69.4%] | 100h | 100h |
| 44 | 1.3.5 | Realizar pruebas calidad de código | milestone | 0d | 2019-04-10 A | 2019-04-10 A | 43 | 100% |  |  |  |
| 45 | 1.3.6 | Realizar pruebas funcionales de la aplicación |  | 6d | 2019-04-11 A | 2019-04-22 A | 44 | 100% | Jaime Maldonado Báez [83.3%]; Manuel Francisco Muñoz Calvo [41.7%]; Ángel Ramírez Mancera [83.3%] | 100h | 100h |
| 46 | 1.3.7 | Realizar pruebas de vulnerabilidad (ambiente desarrollo 50%) | milestone | 0d | 2019-04-22 A | 2019-04-22 A | 45 | 100% |  |  |  |
| 47 | 1.3.8 | Generar y entregar paquete aplicativo a la AVL |  | 2d | 2019-04-22 A | 2019-04-23 A | 46FS-1d | 100% | Alejandra Ubaldo Santiago | 16h | 16h |
| 48 | 1.3.9 | **Entregables** |  | 22d | 2019-04-23 A | 2019-05-24 A |  | 100% |  |  |  |
| 49 | 1.3.9.1 | Reporte de pruebas unitarias | milestone | 0d | 2019-04-23 A | 2019-04-23 A | 47 | 100% | Jaime Maldonado Báez |  |  |
| 50 | 1.3.9.2 | Reporte de pruebas de calidad de código | milestone | 0d | 2019-04-23 A | 2019-04-23 A | 47 | 100% | Jaime Maldonado Báez |  |  |
| 51 | 1.3.9.3 | Reporte de pruebas de vulnerabilidad (50% desarrollo) | milestone | 0d | 2019-04-23 A | 2019-04-23 A | 47 | 100% | Jaime Maldonado Báez |  |  |

| ID | WBS | Task | Type | Duration | Start | Finish | Predecessors | Complete | Resources |
| --- | --- | --- | --- | --- | --- | --- | --- | --- | --- |
| 52 | 1.3.9.4 | **Paquete (s)** |  | 0d | 2019-05-24 A | 2019-05-24 A | 51FS+22d | 100% |  |
| 53 | 1.3.9.4.1 | DLCC19182D31 | milestone | 0d | 2019-05-24 A | 2019-05-24 A | 47 | 100% | Jaime Maldonado Báez |
| 54 | 1.3.9.4.2 | DLCC19182D31 | milestone | 0d | 2019-05-24 A | 2019-05-24 A | 47 | 100% | Jaime Maldonado Báez |
| 55 | 1.3.9.4.3 | DLCC19182D31.dp | milestone | 0d | 2019-05-24 A | 2019-05-24 A | 47 | 100% | Jaime Maldonado Báez |
| 56 | 1.3.9.4.4 | DLCC19182D41 | milestone | 0d | 2019-05-24 A | 2019-05-24 A | 47 | 100% | Jaime Maldonado Báez |
| 57 | 1.3.9.4.5 | DLCC19182D41 | milestone | 0d | 2019-05-24 A | 2019-05-24 A | 47 | 100% | Jaime Maldonado Báez |
| 58 | 1.3.9.4.6 | DLCC19182D41.dp | milestone | 0d | 2019-05-24 A | 2019-05-24 A | 47 | 100% | Jaime Maldonado Báez |
| 59 | 1.3.9.4.7 | DLCC19182D11 | milestone | 0d | 2019-05-24 A | 2019-05-24 A | 47 | 100% | Jaime Maldonado Báez |
| 60 | 1.3.9.4.8 | DLCC19182D11 | milestone | 0d | 2019-05-24 A | 2019-05-24 A | 47 | 100% | Jaime Maldonado Báez |
| 61 | 1.3.9.4.9 | DLCC19182D11.dp | milestone | 0d | 2019-05-24 A | 2019-05-24 A | 47 | 100% | Jaime Maldonado Báez |
| 62 | 1.3.9.4.10 | DLCC19182D21 | milestone | 0d | 2019-05-24 A | 2019-05-24 A | 47 | 100% | Jaime Maldonado Báez |
| 63 | 1.3.9.4.11 | DLCC19182D21 | milestone | 0d | 2019-05-24 A | 2019-05-24 A | 47 | 100% | Jaime Maldonado Báez |
| 64 | 1.3.9.4.12 | DLCC19182D21.dp | milestone | 0d | 2019-05-24 A | 2019-05-24 A | 47 | 100% | Jaime Maldonado Báez |
| 65 | 1.3.9.4.13 | DLCC19182D22 | milestone | 0d | 2019-05-24 A | 2019-05-24 A | 47 | 100% | Jaime Maldonado Báez |
| 66 | 1.3.9.4.14 | DLCC19182D22 | milestone | 0d | 2019-05-24 A | 2019-05-24 A | 47 | 100% | Jaime Maldonado Báez |
| 67 | 1.3.9.4.15 | DLCC19182D22.dp | milestone | 0d | 2019-05-24 A | 2019-05-24 A | 47 | 100% | Jaime Maldonado Báez |
| 68 | 1.3.9.4.16 | DLCC19182D12 | milestone | 0d | 2019-05-24 A | 2019-05-24 A | 47 | 100% | Jaime Maldonado Báez |
| 69 | 1.3.9.4.17 | DLCC19182D12 | milestone | 0d | 2019-05-24 A | 2019-05-24 A | 47 | 100% | Jaime Maldonado Báez |
| 70 | 1.3.9.4.18 | DLCC19182D12.dp | milestone | 0d | 2019-05-24 A | 2019-05-24 A | 47 | 100% | Jaime Maldonado Báez |
| 71 | 1.3.9.4.19 | DLCC19182D13 | milestone | 0d | 2019-05-24 A | 2019-05-24 A | 47 | 100% | Jaime Maldonado Báez |
| 72 | 1.3.9.4.20 | DLCC19182D13 | milestone | 0d | 2019-05-24 A | 2019-05-24 A | 47 | 100% | Jaime Maldonado Báez |
| 73 | 1.3.9.4.21 | DLCC19182D13.dp | milestone | 0d | 2019-05-24 A | 2019-05-24 A | 47 | 100% | Jaime Maldonado Báez |
| 74 | 1.3.9.4.22 | 28_382_MAC_IDEWEB | milestone | 0d | 2019-05-24 A | 2019-05-24 A | 47 | 100% | Jaime Maldonado Báez |
| 75 | 1.3.9.4.23 | 28_382_MAI_IDEWEB | milestone | 0d | 2019-05-24 A | 2019-05-24 A | 47 | 100% | Jaime Maldonado Báez |

| ID | WBS | Task | Type | Duration | Start | Finish | Predecessors | Complete | Remaining | Total slack | Free slack | Resources | Work | Actual work |
| --- | --- | --- | --- | --- | --- | --- | --- | --- | --- | --- | --- | --- | --- | --- |
| 76 | 1.4 | **Pruebas** |  | 53d | 2019-04-24 A | 2019-07-09 |  | 54% | 24.45d | 15d |  |  | 767h | 475.8h |
| 77 | 1.4.1 | Ambientación integración y UAT | milestone | 0d | 2019-04-24 A | 2019-04-24 A | 47FS+1d | 100% |  |  |  |  |  |  |
| 78 | 1.4.2 | Seguridad identidades integración y UAT | milestone | 0d | 2019-04-24 A | 2019-04-24 A | 47FS+1d | 100% |  |  |  |  |  |  |
| 79 | 1.4.3 | **Pruebas de integración aplicativa** |  | 17d | 2019-05-27 A | 2019-06-18 A |  | 100% |  |  |  |  | 292h | 292h |
| 80 | 1.4.3.1 | Compilar, armar e instalar solución aplicativa |  | 1d | 2019-05-27 A | 2019-05-27 A | 52 | 100% |  |  |  | AVL | 8h | 8h |
| 81 | 1.4.3.2 | Acompañamiento a compilar, armar e instalar solución aplicativa |  | 4d | 2019-05-27 A | 2019-05-30 A | 52 | 100% |  |  |  | Manuel Francisco Muñoz Calvo; Jaime Maldonado Báez | 64h | 64h |
| 82 | 1.4.3.3 | Aplicación instalada en ambiente de integración | milestone | 0d | 2019-05-30 A | 2019-05-30 A | 80, 81 | 100% |  |  |  | Jaime Maldonado Báez |  |  |
| 83 | 1.4.3.4 | Ejecutar pruebas de integración aplicativa |  | 9d | 2019-05-31 A | 2019-06-12 A | 81 | 100% |  |  |  | Manuel Francisco Muñoz Calvo [83.3%]; Ángel Ramírez Mancera [83.3%] | 120h | 120h |
| 84 | 1.4.3.5 | Realizar pruebas de vulnerabilidad (ambiente integración 75%) | milestone | 0d | 2019-05-30 A | 2019-05-30 A | 81 | 100% |  |  |  |  |  |  |
| 85 | 1.4.3.6 | Atención a la iniciativa para la solución aplicativa |  | 2.5d | 2019-05-29 A | 2019-05-31 A | 84FS-2d | 100% |  |  |  | AVL | 20h | 20h |
| 86 | 1.4.3.7 | Reporte de prueba de integración aplicativa | milestone | 0d | 2019-06-13 A | 2019-06-13 A | 83FS+1d | 100% |  |  |  | Jaime Maldonado Báez |  |  |
| 87 | 1.4.3.8 | Actualizar paquete aplicativo a la AVL |  | 3d | 2019-06-14 A | 2019-06-18 A | 83FS+1d | 100% |  |  |  | Alejandra Ubaldo Santiago [68.2%]; Saúl Juárez Gutierrez [68.2%]; Hermilo Martínez González [68.2%]; Ángel Ramírez Mancera [58.5%]; Arturo Mínguez Alcántara [70.2%] | 80h | 80h |
| 88 | 1.4.4 | **Pruebas de usuario** |  | 15d | 2019-06-19 A | 2019-07-09 |  | 34% | 9.91d | 15d |  |  | 449h | 183.8h |
| 89 | 1.4.4.1 | Compilar, Armar e Instalar solución aplicativa - ambiente de pruebas de usuario |  | 1d | 2019-06-19 A | 2019-06-19 A | 87 | 100% |  |  |  | Administrador ACOST [25%]; AVL [25%] | 4h | 4h |
| 90 | 1.4.4.2 | Acompañar instalación solución aplicativa - ambiente de pruebas de usuario |  | 8d | 2019-06-19 A | 2019-06-28 | 87 | 50% | 4d | 22d |  | Efraín Tapia Puebla [78.1%]; José Luis Valtierra Pizano [78.1%] | 100h | 50h |
| 91 | 1.4.4.3 | Aplicación instalada en ambiente de pruebas de usuario | milestone | 0d | 2019-06-19 A | 2019-06-19 A | 89 | 100% |  |  |  | Jaime Maldonado Báez |  |  |
| 92 | 1.4.4.4 | Validar solución aplicativa instalada en ambiente de UAT |  | 0.5d | 2019-06-20 A | 2019-06-20 A | 91 | 100% |  |  |  | Manuel Vargas Espinosa | 4h | 4h |
| 93 | 1.4.4.5 | Coordinar las pruebas de aceptación del usuario |  | 0.5d | 2019-06-20 A | 2019-06-20 A | 92 | 100% |  |  |  | Manuel Vargas Espinosa [25%] | 1h | 1h |
| 94 | 1.4.4.6 | Ejecutar pruebas de usuario de la solución completa |  | 3d | 2019-06-21 | 2019-06-25 | 93 |  |  | 0d |  | Usuario solicitante [25%] | 6h |  |
| 95 | 1.4.4.7 | Acompañar pruebas de usuario y atender hallazgos/defectos en la aplicación |  | 13d | 2019-06-21 A | 2019-07-09 | 93 | 40% | 7.8d | 15d |  | Wendy Fabiola Ruiz Nieto; Daniel Abraham Sánchez Cárdenas; Cristian Adolfo Rojo Delgado | 312h | 124.8h |
| 96 | 1.4.4.8 | Registrar hallazgos / defectos |  | 3d | 2019-06-21 | 2019-06-25 | 94FS-3d |  |  | 25d | 0d | Usuario solicitante [50%] | 12h |  |
| 97 | 1.4.4.9 | Atender incidentes en ambientes |  | 3d | 2019-06-21 | 2019-06-25 | 94FS-3d |  |  | 0d |  | Proveedores AGCTI [25%] | 6h |  |
| 98 | 1.4.4.10 | Validar defectos ajustados |  | 0.5d | 2019-06-25 | 2019-06-25 | 97FS-1d |  |  | 0d |  | Usuario solicitante [25%]; Manuel Vargas Espinosa [25%] | 2h |  |
| 99 | 1.4.4.11 | Elaborar Oficio de Aceptación de Pruebas de Usuario y Liberación |  | 0.5d | 2019-06-25 | 2019-06-25 | 98 |  |  | 0d |  | Usuario solicitante [25%]; Manuel Vargas Espinosa [25%] | 2h |  |
| 100 | 1.4.4.12 | Oficio de Aceptación de Pruebas de Usuario y Liberación | milestone | 0d | 2019-06-25 | 2019-06-25 | 99 |  |  | 0d |  | Usuario solicitante; Manuel Vargas Espinosa |  |  |
| 101 | 1.4.5 | Ambientación de estrés y producción | milestone | 0d | 2019-06-25 | 2019-06-25 | 96 |  |  | 25d |  |  |  |  |
| 102 | 1.4.6 | Seguridad identidades estrés y producción | milestone | 0d | 2019-06-25 | 2019-06-25 | 96 |  |  | 25d |  |  |  |  |

| ID | WBS | Task | Type | Duration | Start | Finish | Predecessors | Total slack | Free slack | Resources | Work |
| --- | --- | --- | --- | --- | --- | --- | --- | --- | --- | --- | --- |
| 103 | 1.4.7 | **Pruebas de vulnerabilidad** |  | 2d | 2019-06-25 | 2019-06-27 |  | 0d |  |  | 8h |
| 104 | 1.4.7.1 | Ejecutar pruebas de vulnerabilidad | milestone | 0d | 2019-06-25 | 2019-06-25 | 100 | 0d |  |  |  |
| 105 | 1.4.7.2 | Informar los hallazgos | milestone | 0d | 2019-06-25 | 2019-06-25 | 104 | 2d | 0d |  |  |
| 106 | 1.4.7.3 | Atender hallazgos | milestone | 0d | 2019-06-25 | 2019-06-25 | 105 | 2d |  |  |  |
| 107 | 1.4.7.4 | Certificar la seguridad de información |  | 2d | 2019-06-26 | 2019-06-27 | 104 | 0d |  | Administrador ACSMC [50%] | 8h |
| 108 | 1.4.7.5 | Reporte de pruebas de vulnerabilidad | milestone | 0d | 2019-06-27 | 2019-06-27 | 107 | 0d |  | Proveedores AGCTI |  |
| 109 | 1.4.7.6 | Certificado de no vulnerabilidades | milestone | 0d | 2019-06-27 | 2019-06-27 | 108 | 0d |  | Administrador ACSMC |  |
| 110 | 1.4.8 | **Pruebas de estrés** |  | 1.5d | 2019-06-25 | 2019-06-26 |  | 24.5d |  |  | 18h |
| 111 | 1.4.8.1 | Compilar, Armar e Instalar solución aplicativa - ambiente de estrés |  | 0.5d | 2019-06-26 | 2019-06-26 | 100 | 24.5d |  | Administrador ACOST [25%]; Proveedores AGCTI [25%] | 2h |
| 112 | 1.4.8.2 | Automatizar caso de prueba de estrés | milestone | 0d | 2019-06-25 | 2019-06-25 | 100 | 25d | 0d |  |  |
| 113 | 1.4.8.3 | Ejecutar pruebas de estrés | milestone | 0d | 2019-06-25 | 2019-06-25 | 112 | 25d | 0d |  |  |
| 114 | 1.4.8.4 | Informar los hallazgos | milestone | 0d | 2019-06-25 | 2019-06-25 | 113 | 25d | 0d |  |  |
| 115 | 1.4.8.5 | Atender hallazgos |  | 1d | 2019-06-25 | 2019-06-25 | 114FS-1d | 25d |  | Administrador ACSMC [50%]; Administrador ACTT | 12h |
| 116 | 1.4.8.6 | Formalizar informe de pruebas de estrés |  | 1d | 2019-06-25 | 2019-06-25 | 114FS-1d | 25d | 0d | AVL [50%] | 4h |
| 117 | 1.4.8.7 | Reporte de pruebas de estrés | milestone | 0d | 2019-06-25 | 2019-06-25 | 116 | 25d | 0d | AVL |  |
| 118 | 1.4.8.8 | Informe de pruebas de estrés | milestone | 0d | 2019-06-25 | 2019-06-25 | 117 | 25d |  | AVL |  |
| 119 | 1.5 | **Acompañamiento a la implementación** |  | 17d | 2019-06-28 | 2019-07-22 |  | 0d |  |  | 271h |
| 120 | 1.5.1 | Realizar toma aplicativa |  | 0.5d | 2019-06-28 | 2019-06-28 | 103 | 0d |  | Ignacio Ruiz Casillas [25%]; Administrador ACOST [25%] | 2h |
| 121 | 1.5.2 | Capacitar a Mesa de servicio (CDS) | milestone | 0d | 2019-06-28 | 2019-06-28 | 103FS+1d | 22d |  |  |  |
| 122 | 1.5.3 | Capacitar a Mesa de servicio (RAPE) | milestone | 0d | 2019-06-28 | 2019-06-28 | 103FS+1d | 22d |  | Ignacio Ruiz Casillas [50%] |  |
| 123 | 1.5.4 | Instalar solución aplicativa - ambiente de producción |  | 1d | 2019-06-28 | 2019-07-01 | 120 | 0d |  | Administrador ACOST [50%]; Proveedores AGCTI [50%] | 8h |
| 124 | 1.5.5 | Acompañar en la implementación solución aplicativa - ambiente de producción |  | 4d | 2019-06-28 | 2019-07-04 | 120 | 18.5d |  | Ángel Ramírez Mancera | 32h |
| 125 | 1.5.6 | Informar de la puesta en producción |  | 0.5d | 2019-07-01 | 2019-07-01 | 123 | 0d |  | Manuel Vargas Espinosa [25%] | 1h |
| 126 | 1.5.7 | Dar seguimiento al periodo de estabilización |  | 15d | 2019-07-02 | 2019-07-22 | 125 | 0d |  | Arturo Mínguez Alcántara; Saúl Juárez Gutierrez [96.2%] | 228h |
| 127 | 1.5.8 | Aplicación instalada en ambiente de producción | milestone | 0d | 2019-07-01 | 2019-07-01 | 123 | 21.5d |  | Administrador ACOST; Proveedores AGCTI |  |

| ID | WBS | Task | Type | Duration | Start | Finish | Predecessors | Total slack | Resources | Work |
| --- | --- | --- | --- | --- | --- | --- | --- | --- | --- | --- |
| 128 | 1.6 | **Cierre** |  | 6d | 2019-07-23 | 2019-07-30 |  | 0d |  | 12h |
| 129 | 1.6.1 | Cerrar proyecto |  | 6d | 2019-07-23 | 2019-07-30 | 126 | 0d | PMO AGCTI [25%] | 12h |
| 130 | 1.6.2 | Proyecto cerrado | milestone | 0d | 2019-07-30 | 2019-07-30 | 129 | 0d | PMO AGCTI |  |
