# CZA_CREDFIS: Mejoras al proceso de envío de archivos de pago en efectivo y virtuales hacia MAT-Cobranza.

Schedule from MS Project, 2023-09-11 to 2023-10-17, status date 2023-09-28, costs in $, A marks actual dates.

## Calendars

- Standard: Mon-Fri 08:00-12:00, 13:00-17:00; Sat-Sun off. Exceptions (off unless hours are given): 2023-09-16 (Día de la Independencia).

## Resources

| Resource | Group | Rate |
| --- | --- | --- |
| GUTIERREZ SANCHEZ MARIA DEL CARMEN | SYE | 229 |
| YESICA DIEGO MOTA | SYE |  |
| Alejandro Domínguez Subías |  |  |
| Jose Luis Ávila Vázquez |  |  |
| Carlos Botello Montaño |  |  |
| Victor Juan Alvarado Solorzano |  |  |
| Juan Alfonso Cortes Gallardo Sánchez |  |  |
| Ivan Soto Calderón |  |  |
| Raúl Becerra Arroyo |  |  |
| Martin Alejandro Solís Niño |  |  |
| Jose Luis Vences Mendoza |  |  |
| Fernando Soriano Cerón |  |  |
| Sergio Jesús Romero Gallo |  |  |
| Gerardo Hernández Martínez |  |  |
| RAPE |  |  |
| Ignacio Ramon Ruiz Casillas |  |  |
| Angelica Maria Cortes Ramos |  |  |
| José Eduardo Gutierrez Delgado | SYE |  |
| Raul Becerra Arroyo |  |  |
| Francisco Valdez Millan |  |  |

## Schedule

| ID | WBS | Task | Type | Duration | Start | Finish | Predecessors | Complete | Remaining | Baseline start | Baseline finish | Baseline duration | Total slack | Free slack | Constraint | Resources | Work | Actual work | Cost | Baseline cost | Actual cost |
| --- | --- | --- | --- | --- | --- | --- | --- | --- | --- | --- | --- | --- | --- | --- | --- | --- | --- | --- | --- | --- | --- |
| 1 | 1 | Inicio | milestone, manual | 0d | 2023-09-11 A | 2023-09-11 A |  | 100% |  | 2023-06-28 | 2023-06-28 | 0d |  |  | must start on 2023-09-11 |  |  |  |  |  |  |
| 2 | 2 | **Análisis** |  | 26.76d | 2023-09-11 A | 2023-10-17 |  | 79% | 5.62d | 2023-06-28 | 2023-08-07 | 28.5d | 0d |  |  |  | 312h | 270h | 27,938 | 43,395.5 | 26,564 |
| 3 | 2.1 | **Ciclo uno** |  | 12.26d | 2023-09-11 A | 2023-09-27 A |  | 100% |  | 2023-06-28 | 2023-07-24 | 19d |  |  |  |  | 190h | 190h | 16,717 | 34,235.5 | 16,717 |
| 4 | 2.1.1 | Aplicar revisión del aplicativo y su funcionamiento |  | 1d | 2023-09-11 A | 2023-09-11 A | 1 | 100% |  | 2023-06-28 | 2023-06-28 | 1d |  |  |  | GUTIERREZ SANCHEZ MARIA DEL CARMEN; YESICA DIEGO MOTA | 16h | 16h | 1,832 | 1,832 | 1,832 |
| 5 | 2.1.2 | Sesión de trabajo con usuario para documentar especificación funcional |  | 1d | 2023-09-12 A | 2023-09-12 A | 4 | 100% |  |  |  |  |  |  |  | Raúl Becerra Arroyo [25%]; Francisco Valdez Millan [25%] | 4h | 4h |  |  |  |
| 6 | 2.1.3 | Documentar/Actualizar la especificación funcional |  | 6.26d | 2023-09-12 A | 2023-09-20 A | 4 | 100% |  | 2023-06-29 | 2023-07-19 | 15d |  |  |  | GUTIERREZ SANCHEZ MARIA DEL CARMEN [97.9%]; YESICA DIEGO MOTA [97.9%] | 98h | 98h | 11,221 | 26,907.5 | 11,221 |
| 7 | 2.1.4 | Sesiones de trabajo con usuario para documentar especificación funcional |  | 3d | 2023-09-15 A | 2023-09-19 A | 4FS+3d | 100% |  |  |  |  |  |  |  | Raúl Becerra Arroyo [25%]; Francisco Valdez Millan [25%] | 12h | 12h |  |  |  |
| 8 | 2.1.5 | Revisar documentación de la especificación funcional |  | 2d | 2023-09-20 A | 2023-09-22 A | 6 | 100% |  | 2023-07-20 | 2023-07-24 | 3d |  |  |  | GUTIERREZ SANCHEZ MARIA DEL CARMEN; YESICA DIEGO MOTA; José Eduardo Gutierrez Delgado | 48h | 48h | 3,664 | 5,496 | 3,664 |
| 9 | 2.1.6 | Revisar documentación / Generar observaciones a la Especificación Funcional |  | 3d | 2023-09-22 A | 2023-09-27 A | 8 | 100% |  | 2023-07-24 | 2023-07-24 | 0d |  |  |  | Raúl Becerra Arroyo [25%]; Francisco Valdez Millan [25%] | 12h | 12h |  |  |  |
| 10 | 2.2 | **Ciclo dos** |  | 14.5d | 2023-09-27 A | 2023-10-17 |  | 54% | 6.71d | 2023-07-25 | 2023-08-07 | 9.5d | 0d |  |  |  | 122h | 80h | 11,221 | 9,160 | 9,847 |
| 11 | 2.2.1 | Revisar información de observaciones |  | 3d | 2023-09-27 A | 2023-10-02 A | 9 | 100% |  | 2023-07-25 | 2023-07-25 | 1d |  |  |  | GUTIERREZ SANCHEZ MARIA DEL CARMEN [50%]; YESICA DIEGO MOTA [50%] | 24h | 24h | 2,748 | 1,832 | 2,748 |
| 12 | 2.2.2 | Atender observaciones realizadas por SN |  | 3d | 2023-10-02 A | 2023-10-05 A | 11 | 100% |  | 2023-07-26 | 2023-07-28 | 3d |  |  |  | GUTIERREZ SANCHEZ MARIA DEL CARMEN [87.5%]; YESICA DIEGO MOTA [87.5%] | 42h | 42h | 4,809 | 5,496 | 4,809 |
| 13 | 2.2.3 | Revisar documentación de la especificación funcional (Soluciones de Negocio) |  | 2d | 2023-10-05 | 2023-10-09 | 12 |  |  | 2023-07-31 | 2023-08-01 | 2d | 0.75d | 0d |  | Raul Becerra Arroyo | 16h |  |  |  |  |
| 14 | 2.2.4 | Revisión de Especificación Funcional entre Soluciones de Negocio y Usuario |  | 3d | 2023-10-09 | 2023-10-12 | 13 |  |  | 2023-08-02 | 2023-08-03 | 2d | 0.75d | 0d |  | Raúl Becerra Arroyo [25%]; Francisco Valdez Millan [25%] | 12h |  |  |  |  |
| 15 | 2.2.5 | Atender observaciones realizadas por SN |  | 1d | 2023-10-12 A | 2023-10-13 | 14 | 75% | 0.25d |  |  |  | 0.5d | 0d |  | GUTIERREZ SANCHEZ MARIA DEL CARMEN | 8h | 6h | 1,832 |  | 1,374 |
| 16 | 2.2.6 | Aplicar revisión de QA a la Especificación Funcional |  | 1d | 2023-10-13 A | 2023-10-16 | 15 | 50% | 0.5d | 2023-08-04 | 2023-08-04 | 1d | 0d |  |  | GUTIERREZ SANCHEZ MARIA DEL CARMEN; YESICA DIEGO MOTA | 16h | 8h | 1,832 | 1,832 | 916 |
| 17 | 2.2.7 | Preparar insumos y realizar la carga de la Especificación Funcional en SharePoint |  | 0.5d | 2023-10-16 | 2023-10-16 | 16 |  |  | 2023-08-07 | 2023-08-07 | 0.5d | 0d |  |  | YESICA DIEGO MOTA | 4h |  |  |  |  |
| 18 | 2.2.8 | **Entregables** |  | 0d | 2023-10-17 | 2023-10-17 |  |  |  | 2023-08-07 | 2023-08-07 | 0d | 0d |  |  |  |  |  |  |  |  |
| 19 | 2.2.8.1 | 03_644_CRN_CREDIFS | milestone | 0d | 2023-10-17 | 2023-10-17 | 17FS+1d |  |  | 2023-08-07 | 2023-08-07 | 0d | 0d |  |  | GUTIERREZ SANCHEZ MARIA DEL CARMEN |  |  |  |  |  |
| 20 | 2.2.8.2 | 03_644_ECU_Descargo de Pagos | milestone | 0d | 2023-10-17 | 2023-10-17 | 17FS+1d |  |  | 2023-08-07 | 2023-08-07 | 0d | 0d |  |  | GUTIERREZ SANCHEZ MARIA DEL CARMEN |  |  |  |  |  |
| 21 | 2.2.8.3 | 03_644_EIU_Descargo de Pagos | milestone | 0d | 2023-10-17 | 2023-10-17 | 17FS+1d |  |  | 2023-08-07 | 2023-08-07 | 0d | 0d |  |  | GUTIERREZ SANCHEZ MARIA DEL CARMEN |  |  |  |  |  |
| 22 | 2.2.8.4 | 03_644_RDP_CREDIFS | milestone | 0d | 2023-10-17 | 2023-10-17 | 17FS+1d |  |  | 2023-08-07 | 2023-08-07 | 0d | 0d |  |  | GUTIERREZ SANCHEZ MARIA DEL CARMEN |  |  |  |  |  |
| 23 | 2.3 | **Formalización de documentación** |  | 0d | 2023-10-17 | 2023-10-17 |  |  |  | 2023-08-03 | 2023-08-03 | 0d | 0d |  |  |  |  |  |  |  |  |
| 24 | 2.3.1 | Especificación funcional formalizada | milestone | 0h | 2023-10-17 | 2023-10-17 | 22 |  |  | 2023-08-03 | 2023-08-03 | 0h | 0d |  |  |  |  |  |  |  |  |
| 25 | 3 | Fin | milestone | 0d | 2023-10-17 | 2023-10-17 | 24 |  |  | 2023-08-03 | 2023-08-03 | 0d | 0d |  |  |  |  |  |  |  |  |
